# Sistema de Controle de Videolocadora

Schedule from ProjectLibre, 2017-03-01 to 2017-04-20.

## Calendars

- Padrão: Mon-Fri 08:00-12:00, 13:00-17:00; Sat-Sun off.

## Resources

| Resource | Rate | Cost per use |
| --- | --- | --- |
| Não atribuído |  |  |
| Jorge da Silva | 15 |  |
| João Victor | 15 |  |
| Thiago Mesquita | 15 |  |
| Bruna de Souza | 20 |  |
| Rafael Vargas | 20 |  |
| José da Qualidade | 40 |  |
| José da Diretoria | 40 |  |
| Equipamento 1 |  | 33 |
| Equipamento 2 |  | 33 |
| Equipamento 3 |  | 33 |
| Equipamento 4 |  | 33 |
| Equipamento 5 |  | 33 |
| Programador Teste |  |  |

## Schedule

| ID | WBS | Task | Duration | Start | Finish | Predecessors | Baseline start | Baseline finish | Total slack | Resources |
| --- | --- | --- | --- | --- | --- | --- | --- | --- | --- | --- |
| 1 | 1 | **Projeto SCV** | 36.5d? | 2017-03-01 | 2017-04-20 |  | 2017-03-01 | 2017-04-20 |  |  |
| 2 | 1.1 | **Concepção** | 5.25d? | 2017-03-01 | 2017-03-08 |  | 2017-03-01 | 2017-03-08 |  |  |
| 3 | 1.1.1 | Modelo Conceitual | 0.5d | 2017-03-01 | 2017-03-01 |  | 2017-03-01 | 2017-03-01 |  | Bruna de Souza |
| 4 | 1.1.2 | Documento de Requisitos | 2d? | 2017-03-01 | 2017-03-03 | 3 | 2017-03-01 | 2017-03-03 |  | Bruna de Souza |
| 5 | 1.1.3 | Documento de Organização dos Requisitos | 0.5d? | 2017-03-03 | 2017-03-06 | 4 | 2017-03-03 | 2017-03-06 |  | Bruna de Souza |
| 6 | 1.1.4 | Plano de Projeto | 2d? | 2017-03-06 | 2017-03-08 | 5 | 2017-03-06 | 2017-03-08 |  | Rafael Vargas |
| 7 | 1.2 | **Elaboração i - Análise** | 1.25d? | 2017-03-08 | 2017-03-09 | 2 | 2017-03-08 | 2017-03-09 |  |  |
| 8 | 1.2.1 | Descrição dos Casos de Uso | 1d? | 2017-03-08 | 2017-03-09 | 6 | 2017-03-08 | 2017-03-09 |  | Bruna de Souza |
| 9 | 1.2.2 | Diagrama de Casos de Uso | 0.25d? | 2017-03-09 | 2017-03-09 | 8 | 2017-03-09 | 2017-03-09 |  | Bruna de Souza |
| 10 | 1.3 | **Elaboração ii - Projeto** | 1.75d? | 2017-03-09 | 2017-03-13 | 7 | 2017-03-09 | 2017-03-13 |  |  |
| 11 | 1.3.1 | Diagrama de Classes de Projeto | 1d? | 2017-03-09 | 2017-03-10 |  | 2017-03-09 | 2017-03-10 |  | Bruna de Souza |
| 12 | 1.3.2 | Banco de Dados | 0.5d? | 2017-03-10 | 2017-03-13 | 11 | 2017-03-10 | 2017-03-13 |  | Jorge da Silva |
| 13 | 1.4 | **Iteração 1** | 4d? | 2017-03-13 | 2017-03-17 | 10 | 2017-03-13 | 2017-03-17 |  |  |
| 14 | 1.4.1 | **Construção** | 4d? | 2017-03-13 | 2017-03-17 |  | 2017-03-13 | 2017-03-17 |  |  |
| 15 | 1.4.1.1 | **Implementar e Testar** | 4d? | 2017-03-13 | 2017-03-17 |  | 2017-03-13 | 2017-03-17 |  |  |
| 16 | 1.4.1.1.1 | [RF39] - Emprestar Fita | 2d? | 2017-03-13 | 2017-03-15 |  | 2017-03-13 | 2017-03-15 |  | Thiago Mesquita |
| 17 | 1.4.1.1.2 | [RF40] - Cancelar Empréstimo de Fita | 2d? | 2017-03-13 | 2017-03-15 |  | 2017-03-13 | 2017-03-15 | 200d | Jorge da Silva |
| 18 | 1.4.1.1.3 | [RF41] - Reservar Fita | 2d? | 2017-03-13 | 2017-03-15 |  | 2017-03-13 | 2017-03-15 | 200d | João Victor |
| 19 | 1.4.1.1.4 | [RF42] - Cancelar Reserva de Fita | 2d? | 2017-03-15 | 2017-03-17 | 16 | 2017-03-15 | 2017-03-17 |  | Thiago Mesquita |
| 20 | 1.5 | **Iteração 2** | 4.25d? | 2017-03-17 | 2017-03-23 | 13 | 2017-03-17 | 2017-03-23 |  |  |
| 21 | 1.5.1 | **Construção** | 4.25d? | 2017-03-17 | 2017-03-23 |  | 2017-03-17 | 2017-03-23 |  |  |
| 22 | 1.5.1.1 | **Implementar e Testar** | 4.25d? | 2017-03-17 | 2017-03-23 |  | 2017-03-17 | 2017-03-23 |  |  |
| 23 | 1.5.1.1.1 | [RF43] - Devolver Fita | 2d? | 2017-03-17 | 2017-03-21 |  | 2017-03-17 | 2017-03-21 | 100d | Thiago Mesquita |
| 24 | 1.5.1.1.2 | [RF44] - Pagar Multa | 2d? | 2017-03-17 | 2017-03-21 |  | 2017-03-17 | 2017-03-21 |  | Jorge da Silva |
| 25 | 1.5.1.1.3 | [RF45] - Atualizar Status de Reserva Automaticamente | 2d? | 2017-03-17 | 2017-03-21 |  | 2017-03-17 | 2017-03-21 | 200d | João Victor |
| 26 | 1.5.1.1.4 | [RF37] - Entrar no Sistema | 1d? | 2017-03-21 | 2017-03-22 | 23 | 2017-03-21 | 2017-03-22 | 100d | Thiago Mesquita |
| 27 | 1.5.1.1.5 | [RF38] - Sair do Sistema | 2d? | 2017-03-21 | 2017-03-23 | 24 | 2017-03-21 | 2017-03-23 |  | Jorge da Silva |

Notes:
- 3: Diagrama UML (Linguagem de Modelagem Unificada). Este diagrama é uma primeira versão do diagrama de classes. Nele encontram-se apenas as classes principais.
- 4: Este documento contém a descrição de todas as funcionalidades do sistema.
- 5: Este documento organiza os requisitos por: Casos de Uso (Requisitos mais complexos: Seção 3.2 do Documento de Requisitos Manutenção de Cadastros: Seção 3.1 do Documento de Requisitos Relatórios/Listagens: Seção 3.3 do Documento de Requisitos
- 6: Este documento descreve o planejamento para o desenvolvimento do projeto do sistema especificado pelo documento de requisitos. Neste documento encontramos planos para as principais áreas de conhecimento da gerência de projetos: Gerenciamento de Escopo Gerenciamento de Tempo Gerenciamento de Custo Gerenciamento de Qualidade Gerenciamento de Recursos Gerenciamento de Comunicações Gerenciamento de Risco
- 8: Descrição passo a passo de todos os casos de uso identificados no sistema a ser desenvolvido.
- 9: Diagrama UML (Linguagem de Modelagem Unificada). Tem a finalidade principal de apresentar graficamente as funcionalidades mais complexas do sistema a ser desenvolvido.
- 11: Diagrama UML (Linguagem de Modelagem Unificada). Este diagrama é diagrama de classes do sistema. Nele encontram-se todas as classes do sistema, bem como seus atributos (características).
- 12: Banco de Dados do Sistema.
- 13: Cada Iteração representa uma porção do sistema a ser desenvolvida. Em cada Iteração são considerados um conjunto de requisitos. A ordem dos requisitos a serem desenvolvidos leva em consideração o Documento de Organização dos Requisitos. 1) Requisitos ligados a Casos de Uso 2) Requisitos ligados a Cadastros 3) Requisitos ligados a Relatórios/Listagens

| ID | WBS | Task | Duration | Start | Finish | Predecessors | Baseline start | Baseline finish | Total slack | Resources |
| --- | --- | --- | --- | --- | --- | --- | --- | --- | --- | --- |
| 28 | 1.6 | **Iteração 3** | 12.75d? | 2017-03-23 | 2017-04-11 | 20 | 2017-03-23 | 2017-04-11 |  |  |
| 29 | 1.6.1 | **Construção** | 12.75d? | 2017-03-23 | 2017-04-11 | 21 | 2017-03-23 | 2017-04-11 |  |  |
| 30 | 1.6.1.1 | **Implementar e Testar** | 12.75d? | 2017-03-23 | 2017-04-11 |  | 2017-03-23 | 2017-04-11 |  |  |
| 31 | 1.6.1.1.1 | [RF01] - Inserir Gerente | 1d? | 2017-03-23 | 2017-03-24 |  | 2017-03-23 | 2017-03-24 |  | João Victor |
| 32 | 1.6.1.1.2 | [RF02] - Alterar Gerente | 1d? | 2017-03-23 | 2017-03-24 |  | 2017-03-23 | 2017-03-24 |  | Thiago Mesquita |
| 33 | 1.6.1.1.3 | [RF03] - Remover Gerente | 1d? | 2017-03-23 | 2017-03-24 |  | 2017-03-23 | 2017-03-24 |  | Jorge da Silva |
| 34 | 1.6.1.1.4 | [RF04] - Visualizar Gerente | 1d? | 2017-03-24 | 2017-03-27 | 31 | 2017-03-24 | 2017-03-27 |  | João Victor |
| 35 | 1.6.1.1.5 | [RF05] - Inserir Funcionário | 1d? | 2017-03-24 | 2017-03-27 | 32 | 2017-03-24 | 2017-03-27 |  | Thiago Mesquita |
| 36 | 1.6.1.1.6 | [RF06] - Alterar Funcionário | 1d? | 2017-03-24 | 2017-03-27 | 33 | 2017-03-24 | 2017-03-27 |  | Jorge da Silva |
| 37 | 1.6.1.1.7 | [RF07] - Remover Funcionário | 1d? | 2017-03-27 | 2017-03-28 | 34 | 2017-03-27 | 2017-03-28 |  | João Victor |
| 38 | 1.6.1.1.8 | [RF08] - Visualizar Funcionário | 1d? | 2017-03-27 | 2017-03-28 | 35 | 2017-03-27 | 2017-03-28 |  | Thiago Mesquita |
| 39 | 1.6.1.1.9 | [RF09] - Inserir Cliente | 1d? | 2017-03-27 | 2017-03-28 | 36 | 2017-03-27 | 2017-03-28 |  | Jorge da Silva |
| 40 | 1.6.1.1.10 | [RF10] - Alterar Cliente | 1d? | 2017-03-28 | 2017-03-29 | 37 | 2017-03-28 | 2017-03-29 |  | João Victor |
| 41 | 1.6.1.1.11 | [RF11] - Remover Cliente | 1d? | 2017-03-28 | 2017-03-29 | 38 | 2017-03-28 | 2017-03-29 |  | Thiago Mesquita |
| 42 | 1.6.1.1.12 | [RF12] - Visualizar Cliente | 1d? | 2017-03-28 | 2017-03-29 | 39 | 2017-03-28 | 2017-03-29 |  | Jorge da Silva |
| 43 | 1.6.1.1.13 | [RF13] - Inserir UF | 1d? | 2017-03-29 | 2017-03-30 | 40 | 2017-03-29 | 2017-03-30 |  | João Victor |
| 44 | 1.6.1.1.14 | [RF14] - Alterar UF | 1d? | 2017-03-29 | 2017-03-30 | 41 | 2017-03-29 | 2017-03-30 |  | Thiago Mesquita |
| 45 | 1.6.1.1.15 | [RF15] - Remover UF | 1d? | 2017-03-29 | 2017-03-30 | 42 | 2017-03-29 | 2017-03-30 |  | Jorge da Silva |
| 46 | 1.6.1.1.16 | [RF16] - Visualizar UF | 1d? | 2017-03-30 | 2017-03-31 | 43 | 2017-03-30 | 2017-03-31 | 25d | João Victor |
| 47 | 1.6.1.1.17 | [RF17] - Inserir Cidade | 1d? | 2017-03-30 | 2017-03-31 | 44 | 2017-03-30 | 2017-03-31 | 25d | Thiago Mesquita |
| 48 | 1.6.1.1.18 | [RF18] - Alterar Cidade | 1d? | 2017-03-30 | 2017-03-31 | 45 | 2017-03-30 | 2017-03-31 | 25d | Jorge da Silva |
| 49 | 1.6.1.1.19 | [RF19] - Remover Cidade | 1d? | 2017-03-31 | 2017-04-03 | 46 | 2017-03-31 | 2017-04-03 |  | João Victor |
| 50 | 1.6.1.1.20 | [RF20] - Visualizar Cidade | 1d? | 2017-03-31 | 2017-04-03 | 47 | 2017-03-31 | 2017-04-03 |  | Thiago Mesquita |
| 51 | 1.6.1.1.21 | [RF21] - Inserir Bairro | 1d? | 2017-03-31 | 2017-04-03 | 48 | 2017-03-31 | 2017-04-03 |  | Jorge da Silva |
| 52 | 1.6.1.1.22 | [RF22] - Alterar Bairro | 1d? | 2017-04-04 | 2017-04-04 | 49 | 2017-04-04 | 2017-04-04 |  | João Victor |
| 53 | 1.6.1.1.23 | [RF23] - Remover Bairro | 1d? | 2017-04-04 | 2017-04-04 | 50 | 2017-04-04 | 2017-04-04 |  | Thiago Mesquita |
| 54 | 1.6.1.1.24 | [RF24] - Visualizar Bairro | 1d? | 2017-04-04 | 2017-04-04 | 51 | 2017-04-04 | 2017-04-04 |  | Jorge da Silva |
| 55 | 1.6.1.1.25 | [RF25] - Inserir Tipo de Filme | 1d? | 2017-04-05 | 2017-04-05 | 52 | 2017-04-05 | 2017-04-05 |  | João Victor |
| 56 | 1.6.1.1.26 | [RF26] - Alterar Tipo de Filme | 1d? | 2017-04-05 | 2017-04-05 | 53 | 2017-04-05 | 2017-04-05 |  | Thiago Mesquita |
| 57 | 1.6.1.1.27 | [RF27] - Remover Tipo de Filme | 1d? | 2017-04-05 | 2017-04-05 | 54 | 2017-04-05 | 2017-04-05 |  | Jorge da Silva |
| 58 | 1.6.1.1.28 | [RF28] - Visualizar Tipo de Filme | 1d? | 2017-04-06 | 2017-04-06 | 55 | 2017-04-06 | 2017-04-06 |  | João Victor |
| 59 | 1.6.1.1.29 | [RF29] - Inserir Filme | 1d? | 2017-04-06 | 2017-04-06 | 56 | 2017-04-06 | 2017-04-06 |  | Thiago Mesquita |
| 60 | 1.6.1.1.30 | [RF30] - Alterar Filme | 1d? | 2017-04-06 | 2017-04-06 | 57 | 2017-04-06 | 2017-04-06 |  | Jorge da Silva |
| 61 | 1.6.1.1.31 | [RF31] - Remover Filme | 1d? | 2017-04-07 | 2017-04-10 | 58 | 2017-04-07 | 2017-04-10 |  | João Victor |
| 62 | 1.6.1.1.32 | [RF32] - Visualizar Filme | 1d? | 2017-04-07 | 2017-04-10 | 59 | 2017-04-07 | 2017-04-10 |  | Thiago Mesquita |
| 63 | 1.6.1.1.33 | [RF33] - Inserir Fita | 1d? | 2017-04-07 | 2017-04-10 | 60 | 2017-04-07 | 2017-04-10 |  | Jorge da Silva |
| 64 | 1.6.1.1.34 | [RF34] - Alterar Fita | 1d? | 2017-04-10 | 2017-04-11 | 61 | 2017-04-10 | 2017-04-11 |  | João Victor |
| 65 | 1.6.1.1.35 | [RF35] - Remover Fita | 1d? | 2017-04-10 | 2017-04-11 | 62 | 2017-04-10 | 2017-04-11 |  | Thiago Mesquita |
| 66 | 1.6.1.1.36 | [RF36] - Visualizar Fita | 1d? | 2017-04-10 | 2017-04-11 | 63 | 2017-04-10 | 2017-04-11 |  | Jorge da Silva |

| ID | WBS | Task | Duration | Start | Finish | Predecessors | Baseline start | Baseline finish | Total slack | Resources |
| --- | --- | --- | --- | --- | --- | --- | --- | --- | --- | --- |
| 67 | 1.7 | **Iteração 4** | 6.25d? | 2017-04-11 | 2017-04-19 | 28 | 2017-04-11 | 2017-04-19 |  |  |
| 68 | 1.7.1 | **Construção** | 6.25d? | 2017-04-11 | 2017-04-19 | 29 | 2017-04-11 | 2017-04-19 |  |  |
| 69 | 1.7.1.1 | **Implementar e Testar** | 6.25d? | 2017-04-11 | 2017-04-19 |  | 2017-04-11 | 2017-04-19 |  |  |
| 70 | 1.7.1.1.1 | [RF46] - Listar Gerentes | 1d? | 2017-04-11 | 2017-04-12 |  | 2017-04-11 | 2017-04-12 |  | João Victor |
| 71 | 1.7.1.1.2 | [RF47] - Listar Funcionários | 1d? | 2017-04-11 | 2017-04-12 |  | 2017-04-11 | 2017-04-12 | 100d | Thiago Mesquita |
| 72 | 1.7.1.1.3 | [RF48] - Listar Clientes | 1d? | 2017-04-11 | 2017-04-12 |  | 2017-04-11 | 2017-04-12 | 100d | Jorge da Silva |
| 73 | 1.7.1.1.4 | [RF49] - Listar Clientes Suspensos | 1d? | 2017-04-12 | 2017-04-13 | 70 | 2017-04-12 | 2017-04-13 |  | João Victor |
| 74 | 1.7.1.1.5 | [RF50] - Listar UF’s | 1d? | 2017-04-12 | 2017-04-13 | 71 | 2017-04-12 | 2017-04-13 | 100d | Thiago Mesquita |
| 75 | 1.7.1.1.6 | [RF51] - Listar Cidades | 1d? | 2017-04-12 | 2017-04-13 | 72 | 2017-04-12 | 2017-04-13 | 100d | Jorge da Silva |
| 76 | 1.7.1.1.7 | [RF52] - Listar Bairros | 1d? | 2017-04-13 | 2017-04-14 | 73 | 2017-04-13 | 2017-04-14 |  | João Victor |
| 77 | 1.7.1.1.8 | [RF53] - Listar Tipos de Filmes | 1d? | 2017-04-13 | 2017-04-14 | 74 | 2017-04-13 | 2017-04-14 | 125d | Thiago Mesquita |
| 78 | 1.7.1.1.9 | [RF54] - Listar Filmes (Por Tipo de Filme) | 1d? | 2017-04-13 | 2017-04-14 | 75 | 2017-04-13 | 2017-04-14 | 125d | Jorge da Silva |
| 79 | 1.7.1.1.10 | [RF55] - Listar Fitas (Por Tipo de Filme e Filme) | 1d? | 2017-04-14 | 2017-04-17 | 76 | 2017-04-14 | 2017-04-17 |  | João Victor |
| 80 | 1.7.1.1.11 | [RF56] - Listar Estatísticas de Empréstimos (Por Cliente, Data Início e Data Término) | 1d? | 2017-04-14 | 2017-04-17 | 77 | 2017-04-14 | 2017-04-17 | 100d | Thiago Mesquita |
| 81 | 1.7.1.1.12 | [RF57] - Listar Estatísticas de Reservas (Por Cliente, Status, Data Início e Data Término) | 1d? | 2017-04-14 | 2017-04-17 | 78 | 2017-04-14 | 2017-04-17 | 100d | Jorge da Silva |
| 82 | 1.7.1.1.13 | [RF58] - Listar Estatísticas de Devoluções (Por Cliente, Filme, Data Início e Data Término) | 1d? | 2017-04-17 | 2017-04-18 | 79 | 2017-04-17 | 2017-04-18 |  | João Victor |
| 83 | 1.7.1.1.14 | [RF59] - Listar Empréstimos (Por Cliente, Data Início e Data Término) | 1d? | 2017-04-17 | 2017-04-18 | 80 | 2017-04-17 | 2017-04-18 | 100d | Thiago Mesquita |
| 84 | 1.7.1.1.15 | [RF60] - Listar Reservas (Por Cliente, Status, Data Início e Data Término) | 1d? | 2017-04-17 | 2017-04-18 | 81 | 2017-04-17 | 2017-04-18 | 100d | Jorge da Silva |
| 85 | 1.7.1.1.16 | [RF61] - Listar Devoluções (Por Cliente, Filme, Data Início e Data Término) | 1d? | 2017-04-18 | 2017-04-19 | 82 | 2017-04-18 | 2017-04-19 |  | João Victor |
| 86 | 1.8 | **Transição** | 1d? | 2017-04-19 | 2017-04-20 | 68 | 2017-04-19 | 2017-04-20 |  |  |
| 87 | 1.8.1 | Instalação do Sistema no Cliente | 1d? | 2017-04-19 | 2017-04-20 |  | 2017-04-19 | 2017-04-20 |  | Thiago Mesquita |
| 89 | 1.9 | **Recursos - Infra-Estrutura** | 0d? | 2017-03-01 | 2017-03-01 |  | 2017-03-01 | 2017-03-01 | 3650d |  |
| 90 | 1.9.1 | Ferramentas | 0d? | 2017-03-01 | 2017-03-01 |  | 2017-03-01 | 2017-03-01 | 3650d |  |
| 91 | 1.9.2 | Equipamentos | 0d? | 2017-03-01 | 2017-03-01 |  | 2017-03-01 | 2017-03-01 | 3650d | Equipamento 1; Equipamento 2; Equipamento 3; Equipamento 4; Equipamento 5 |

Notes:
- 89: Nesta atividade serão armazenadas informações dos equipamentos e ferramentas utilizados no desenvolvimento do sistema. Isto é muito importante para que seja levado em consideração no custo do projeto, os gastos com Ferramentas (licenças de softwares que que tiveram de ser compradas) e Depreciações de Equipamentos (o custo ou a despesa decorrentes do desgaste ou da obsolescência dos ativos imobilizados (máquinas) da empresa.

| ID | WBS | Task | Duration | Start | Finish | Baseline start | Baseline finish | Total slack | Constraint | Resources |
| --- | --- | --- | --- | --- | --- | --- | --- | --- | --- | --- |
| 93 | 1.10 | **Monitoramento e Controle** | 34d? | 2017-03-01 | 2017-04-17 | 2017-03-01 | 2017-04-17 | 250d |  |  |
| 94 | 1.10.1 | **Reuniões** | 0.25d? | 2017-03-01 | 2017-03-01 | 2017-03-01 | 2017-03-01 | 3625d |  |  |
| 95 | 1.10.1.1 | **Reuniões da Equipe Técnica** | 0.25d? | 2017-03-01 | 2017-03-01 | 2017-03-01 | 2017-03-01 | 3625d |  |  |
| 96 | 1.10.1.1.1 | Reunião 01 | 0.25d? | 2017-03-01 | 2017-03-01 | 2017-03-01 | 2017-03-01 | 3625d | start no earlier than 2016-01-08 | Jorge da Silva; João Victor; Thiago Mesquita; Bruna de Souza; Rafael Vargas |
| 97 | 1.10.1.1.2 | Reunião 02 | 0.25d? | 2017-03-01 | 2017-03-01 | 2017-03-01 | 2017-03-01 | 3625d | start no earlier than 2016-01-15 | Jorge da Silva; João Victor; Thiago Mesquita; Bruna de Souza; Rafael Vargas |
| 98 | 1.10.1.1.3 | Reunião 03 | 0.25d? | 2017-03-01 | 2017-03-01 | 2017-03-01 | 2017-03-01 | 3625d | start no earlier than 2016-01-22 | Jorge da Silva; João Victor; Thiago Mesquita; Bruna de Souza; Rafael Vargas |
| 99 | 1.10.1.1.4 | Reunião 04 | 0.25d? | 2017-03-01 | 2017-03-01 | 2017-03-01 | 2017-03-01 | 3625d | start no earlier than 2016-01-29 | Jorge da Silva; João Victor; Thiago Mesquita; Bruna de Souza; Rafael Vargas |
| 100 | 1.10.1.1.5 | Reunião 05 | 0.25d? | 2017-03-01 | 2017-03-01 | 2017-03-01 | 2017-03-01 | 3625d | start no earlier than 2016-02-05 | Jorge da Silva; João Victor; Thiago Mesquita; Bruna de Souza; Rafael Vargas |
| 101 | 1.10.1.1.6 | Reunião 06 | 0.25d? | 2017-03-01 | 2017-03-01 | 2017-03-01 | 2017-03-01 | 3625d | start no earlier than 2016-02-12 | Jorge da Silva; João Victor; Thiago Mesquita; Bruna de Souza; Rafael Vargas |
| 102 | 1.10.1.1.7 | Reunião 07 | 0.25d? | 2017-03-01 | 2017-03-01 | 2017-03-01 | 2017-03-01 | 3625d | start no earlier than 2016-02-19 | Jorge da Silva; João Victor; Thiago Mesquita; Bruna de Souza; Rafael Vargas |
| 103 | 1.10.1.2 | **Reuniões de Qualidade** | 0.25d? | 2017-03-01 | 2017-03-01 | 2017-03-01 | 2017-03-01 | 3625d |  |  |
| 104 | 1.10.1.2.1 | Reunião 01 | 0.25d? | 2017-03-01 | 2017-03-01 | 2017-03-01 | 2017-03-01 | 3625d | start no earlier than 2016-01-15 | Rafael Vargas; José da Qualidade |
| 105 | 1.10.1.2.2 | Reunião 02 | 0.25d? | 2017-03-01 | 2017-03-01 | 2017-03-01 | 2017-03-01 | 3625d | start no earlier than 2016-01-29 | Rafael Vargas; José da Qualidade |
| 106 | 1.10.1.2.3 | Reunião 03 | 0.25d? | 2017-03-01 | 2017-03-01 | 2017-03-01 | 2017-03-01 | 3625d | start no earlier than 2016-02-12 | Rafael Vargas; José da Qualidade |
| 107 | 1.10.1.3 | **Reuniões de Apresentação do Status do Projeto** | 0.25d? | 2017-03-01 | 2017-03-01 | 2017-03-01 | 2017-03-01 | 3625d |  |  |
| 108 | 1.10.1.3.1 | Reunião 01 | 0.25d? | 2017-03-01 | 2017-03-01 | 2017-03-01 | 2017-03-01 | 3625d | start no earlier than 2016-02-05 | Rafael Vargas; José da Qualidade; José da Diretoria |
| 110 | 1.10.2 | **Cronograma e Orçamento** | 34d? | 2017-03-01 | 2017-04-17 | 2017-03-01 | 2017-04-17 | 250d |  |  |
| 111 | 1.10.2.1 | Acompanhamento Diário | 30.5d? | 2017-03-01 | 2017-04-17 | 2017-03-01 | 2017-04-17 | 250d | start no earlier than 2016-01-08 | Rafael Vargas |
| 113 | 1.11 | **Treinamentos** | 0.25d? | 2017-03-01 | 2017-03-01 | 2017-03-01 | 2017-03-01 | 3625d |  |  |
| 114 | 1.11.1 | Linguagem de Programação Java | 0.25d? | 2017-03-01 | 2017-03-01 | 2017-03-01 | 2017-03-01 | 3625d | start no earlier than 2009-01-02 | Jorge da Silva; João Victor; Thiago Mesquita; Bruna de Souza |

Notes:
- 94: Esta tarefa representa todas as reuniões que acontecerão no durante o desenvolvimento do sistema.
- 110: Esta atividade representa o tempo necessário que o Gerente de Projeto, utiliza diariamente na finalidade de acompanhar o andamento do desenvolvimento do projeto
- 113: Devem ser especificados aqui todos os treinamentos necessários para o desenvolvimento do projeto.
